# HW1_Vinay_Pavithra_Project1

Schedule from MS Project, 2016-02-15 to 2016-10-07.

## Calendars

- Standard: Mon-Fri 08:00-12:00, 13:00-17:00; Sat-Sun off.

## Resources

| Resource |
| --- |
| PM1 |
| PM2 |
| PM3 |
| PM4 |
| PM5 |
| RE4 |
| RE5 |
| RE76 |
| RE7 |
| RE8 |
| RE9 |
| RE10 |
| RE11 |
| RE12 |
| SE1 |
| SE2 |
| SE3 |
| SE4 |
| SE5 |
| SE6 |
| SE7 |
| SE8 |
| SE9 |
| PE21 |
| PE22 |
| PE23 |
| PE24 |
| PE25 |
| PE26 |
| PE27 |
| PE28 |
| PE29 |
| TE41 |
| TE42 |
| TE43 |
| TE44 |
| TE45 |
| TE46 |
| TE47 |
| TE48 |
| TE49 |
| DE41 |
| DE42 |
| DE43 |
| DE44 |
| DE45 |
| DE47 |
| DE48 |
| DE49 |

## Schedule

| ID | WBS | Task | Duration | Start | Finish | Predecessors | Total slack | Free slack | Resources | Work |
| --- | --- | --- | --- | --- | --- | --- | --- | --- | --- | --- |
| 1 | 1 | **Assignment #1 Project1** | 169.99d | 2016-02-15 | 2016-10-07 |  | 0d |  |  | 5213.52h |
| 2 | 1.1 | **Project Plan** | 15.94d | 2016-02-15 | 2016-03-07 |  | 0d |  |  | 302.08h |
| 3 | 1.1.1 | Write Plan | 10.56d | 2016-02-15 | 2016-02-29 |  | 0d |  | PM1 | 84.48h |
| 4 | 1.1.2 | **Review Plan** | 4.58d | 2016-02-29 | 2016-03-07 | 3 | 0d |  |  | 211.2h |
| 5 | 1.1.2.1 | Preparation for review | 1.06d | 2016-02-29 | 2016-03-01 | 3 | 0d |  | RE4; SE1; PE21; TE41; DE41 | 42.24h |
| 6 | 1.1.2.2 | Review Meeting | 3.52d | 2016-03-01 | 2016-03-07 | 5 | 0d |  | PM1; PE21; RE4; SE1; TE41; DE41 | 168.96h |
| 7 | 1.1.3 | Rework | 0.8d | 2016-03-07 | 2016-03-07 | 6 | 0d |  | PM1 | 6.4h |
| 8 | 1.2 | **Risk Mitigation and Contingency Plan** | 4.39d | 2016-03-07 | 2016-03-14 | 7 | 27.56d |  |  | 76.32h |
| 9 | 1.2.1 | Write Plan | 2.5d | 2016-03-07 | 2016-03-10 | 7 | 27.56d | 0d | PM1 | 20h |
| 10 | 1.2.2 | **Review Plan** | 1.08d | 2016-03-10 | 2016-03-11 | 9 | 27.56d |  |  | 49.84h |
| 11 | 1.2.2.1 | Preparation for review | 0.25d | 2016-03-10 | 2016-03-10 | 9 | 27.56d | 0d | PE21; RE4; SE1; TE41; DE41 | 10h |
| 12 | 1.2.2.2 | Review Meeting | 0.83d | 2016-03-10 | 2016-03-11 | 11 | 27.56d | 0d | PE21; PM1; RE4; SE1; TE41; DE41 | 39.84h |
| 13 | 1.2.3 | Rework | 0.81d | 2016-03-11 | 2016-03-14 | 12 | 27.56d |  | PM1 | 6.48h |
| 14 | 1.3 | **Requirement** | 31.95d | 2016-03-07 | 2016-04-20 | 7 | 0d |  |  | 838.88h |
| 15 | 1.3.1 | Write Requirement | 5.38d | 2016-03-07 | 2016-03-15 | 7 | 0d |  | RE5 | 43.04h |
| 16 | 1.3.2 | Write Use Case Model | 17.19d | 2016-03-15 | 2016-04-07 | 15 | 0d |  | RE4; RE7; RE5; RE8 | 550h |
| 17 | 1.3.3 | **Review Requirements/Use Case Model** | 6.38d | 2016-04-07 | 2016-04-15 | 16 | 0d |  |  | 245.84h |
| 18 | 1.3.3.1 | Preparation for review (req) | 0.34d | 2016-04-07 | 2016-04-07 | 16 | 0d |  | DE41; PE21; SE1; TE41 | 10.72h |
| 19 | 1.3.3.2 | Preparation for review (UC) | 0.86d | 2016-04-07 | 2016-04-08 | 18 | 0d |  | DE41; PE21; SE1; TE41 | 27.52h |
| 20 | 1.3.3.3 | Review Meeting(req) | 2.44d | 2016-04-08 | 2016-04-13 | 19 | 0d |  | DE41; PE21; RE5; SE1; TE41 | 97.6h |
| 21 | 1.3.3.4 | Review Meeting(UC) | 2.75d | 2016-04-13 | 2016-04-15 | 20 | 0d |  | DE41; PE21; RE4; SE1; TE41 | 110h |
| 22 | 1.3.4 | Rework | 3d | 2016-04-15 | 2016-04-20 | 21 | 0d |  |  |  |
| 23 | 1.4 | **Analysis** | 6.23d | 2016-04-20 | 2016-04-29 | 13, 22 | 0d |  |  | 110.48h |
| 24 | 1.4.1 | Write Analysis Document | 2.75d | 2016-04-20 | 2016-04-25 | 13, 22 | 0d |  | SE1 | 22h |

| ID | WBS | Task | Duration | Start | Finish | Predecessors | Total slack | Resources | Work |
| --- | --- | --- | --- | --- | --- | --- | --- | --- | --- |
| 25 | 1.4.2 | **Review Analysis Document** | 2.07d | 2016-04-25 | 2016-04-27 | 24 | 0d |  | 77.2h |
| 26 | 1.4.2.1 | Preparation for Analysis Document | 0.69d | 2016-04-25 | 2016-04-26 | 24 | 0d | SE2; SE3; PE21; PE22 | 22h |
| 27 | 1.4.2.2 | Review Meeting | 1.38d | 2016-04-26 | 2016-04-27 | 26 | 0d | PE21; PE22; SE1; SE2; SE3 | 55.2h |
| 28 | 1.4.3 | Rework | 1.41d | 2016-04-27 | 2016-04-29 | 27 | 0d | SE1 | 11.28h |
| 29 | 1.5 | **Design** | 17.43d | 2016-04-29 | 2016-05-24 | 28 | 0d |  | 360.56h |
| 30 | 1.5.1 | Write DD | 3.44d | 2016-04-29 | 2016-05-04 | 28 | 0d | SE1; SE2 | 55.04h |
| 31 | 1.5.2 | **Review DD** | 2.07d | 2016-05-04 | 2016-05-06 | 30 | 0d |  | 77.2h |
| 32 | 1.5.2.1 | Preparation for DD | 0.69d | 2016-05-04 | 2016-05-05 | 30 | 0d | SE3; SE4; PE21; PE22 | 22h |
| 33 | 1.5.2.2 | Review Meeting | 1.38d | 2016-05-05 | 2016-05-06 | 32 | 0d | PE21; PE22; SE1; SE3; SE4 | 55.2h |
| 34 | 1.5.3 | Rework | 1.65d | 2016-05-06 | 2016-05-10 | 33 | 0d | SE1; SE2 | 26.4h |
| 35 | 1.5.4 | Write Data Model (DM) | 6.25d | 2016-05-10 | 2016-05-18 | 34 | 0d | SE1; SE2 | 100h |
| 36 | 1.5.5 | **Review DM** | 1.82d | 2016-05-18 | 2016-05-20 | 35 | 0d |  | 66.64h |
| 37 | 1.5.5.1 | Preparation for DM | 0.78d | 2016-05-18 | 2016-05-19 | 35 | 0d | SE3; SE4; PE21; PE22 | 25.04h |
| 38 | 1.5.5.2 | Review Meeting | 1.04d | 2016-05-19 | 2016-05-20 | 37 | 0d | PE21; PE22; SE2; SE3; SE4 | 41.6h |
| 39 | 1.5.6 | Rework | 2.21d | 2016-05-20 | 2016-05-24 | 38 | 0d | SE2; SE1 | 35.28h |
| 40 | 1.6 | **Coding and unit Testing** | 68.76d | 2016-05-24 | 2016-08-29 | 39 | 0d |  | 2032.56h |
| 41 | 1.6.1 | Write Code | 36.29d | 2016-05-24 | 2016-07-13 | 39 | 0d | PE21; PE22; PE23; PE24 | 1161.2h |
| 42 | 1.6.2 | **Unit Testing** | 22.69d | 2016-07-13 | 2016-08-15 | 41 | 0d |  | 544.48h |
| 43 | 1.6.2.1 | Prepare/Execute Test Cases | 8.75d | 2016-07-13 | 2016-07-26 | 41 | 0d | PE21; PE22; PE23 | 210h |
| 44 | 1.6.2.2 | Fix Found Defects | 12d | 2016-07-26 | 2016-08-11 | 43 | 0d | PE21; PE22; PE23 | 288h |
| 45 | 1.6.2.3 | Test Fixed Defects | 1.94d | 2016-08-11 | 2016-08-15 | 44 | 0d | PE21; PE22; PE23 | 46.48h |
| 46 | 1.6.3 | **Code Inspection** | 9.79d | 2016-08-15 | 2016-08-29 | 45 | 0d |  | 326.88h |
| 47 | 1.6.3.1 | Preparation for Code Inspection | 1.81d | 2016-08-15 | 2016-08-17 | 45 | 0d | SE1; SE2; PE25; PE26 | 58.08h |
| 48 | 1.6.3.2 | Code Inspection Meeting | 4.84d | 2016-08-17 | 2016-08-24 | 47 | 0d | PE21; PE25; PE26; SE1; SE2 | 193.6h |
| 49 | 1.6.3.3 | Rework | 3.13d | 2016-08-24 | 2016-08-29 | 48 | 0d | PE21; PE22; PE23 | 75.2h |

| ID | WBS | Task | Duration | Start | Finish | Predecessors | Total slack | Free slack | Resources | Work |
| --- | --- | --- | --- | --- | --- | --- | --- | --- | --- | --- |
| 50 | 1.7 | **Testing** | 122.1d | 2016-04-20 | 2016-10-07 | 22 | 0d |  |  | 1182.72h |
| 51 | 1.7.1 | Write test plan (TP) | 12.36d | 2016-04-20 | 2016-05-09 | 22 | 74.66d | 0d | TE41; TE42 | 197.68h |
| 52 | 1.7.2 | **Review TP** | 5.41d | 2016-05-09 | 2016-05-16 | 51 | 74.66d |  |  | 138.4h |
| 53 | 1.7.2.1 | Preparation for TP | 1.08d | 2016-05-09 | 2016-05-10 | 51 | 74.66d | 0d | PE21; SE3; TE43; TE44 | 34.64h |
| 54 | 1.7.2.2 | Review TP Meeting | 2.16d | 2016-05-10 | 2016-05-12 | 53 | 74.66d | 0d | PE21; SE3; TE41; TE43; TE44 | 86.4h |
| 55 | 1.7.2.3 | Rework | 2.17d | 2016-05-12 | 2016-05-16 | 54 | 74.66d |  | TE41 | 17.36h |
| 56 | 1.7.3 | Execute TP (test cases) | 12.88d | 2016-08-29 | 2016-09-15 | 49, 55, 64 | 0d |  | TE41; TE42; TE43 | 309.04h |
| 57 | 1.7.4 | Fix Found Defects | 12d | 2016-09-15 | 2016-10-03 | 56 | 0d |  | PE21; PE22; PE23; PE24 | 384h |
| 58 | 1.7.5 | Test Fixed Defects | 4.8d | 2016-10-03 | 2016-10-07 | 57 | 0d |  | TE41; TE42; TE43; TE44 | 153.6h |
| 59 | 1.8 | **Documentation** | 13.39d | 2016-04-20 | 2016-05-10 | 22 | 79.03d |  |  | 309.92h |
| 60 | 1.8.1 | User Documentation | 6.27d | 2016-04-20 | 2016-04-29 | 22 | 79.03d | 0d | DE41; DE42 | 100.32h |
| 61 | 1.8.2 | **Review UD** | 7.12d | 2016-04-29 | 2016-05-10 | 60 | 79.03d |  |  | 209.6h |
| 62 | 1.8.2.1 | Preparation for UD Review | 1.34d | 2016-04-29 | 2016-05-02 | 60 | 79.03d | 0d | DE43; DE44; RE4; RE5 | 43.04h |
| 63 | 1.8.2.2 | Review UD Meeting | 3.76d | 2016-05-02 | 2016-05-06 | 62 | 79.03d | 0d | DE43; RE4; DE41; DE44; RE5 | 150.4h |
| 64 | 1.8.2.3 | Rework | 2.02d | 2016-05-06 | 2016-05-10 | 63 | 79.03d |  | DE41 | 16.16h |
