Schedule from MS Project, 2018-11-07 to 2019-07-09.

## Calendars

- Standard: Mon-Fri 08:00-12:00, 13:00-17:00; Sat-Sun off.

## Resources

| Resource |
| --- |
| project manager 9 |
| Requirement Engineers1 |
| Requirement Engineers2 |
| Requirement Engineers3 |
| Requirement Engineers5 |
| Requirement engineer 212 |
| Requirement engineer 214 |
| Requirement engineer 215 |
| System Engineers1 |
| System Engineers2 |
| System Engineers3 |
| System Engineers4 |
| System Engineers5 |
| System Engineers6 |
| System Engineers7 |
| System Engineers8 |
| Programmers or Software engineers1 |
| Programmers or Software engineers2 |
| Programmers or Software engineers3 |
| Programmers or Software engineers4 |
| Programmers or Software engineers6 |
| Programmers or Software engineers7 |
| Programmers or Software engineers1215 |
| Programmers or Software engineers8 |
| Test Engineers 1 |
| Test Engineers 2 |
| Test Engineers 3 |
| Test Engineers 4 |
| Test Engineers 5 |
| Test Engineers 6 |
| Test Engineers 7 |
| Test Engineers 193 |
| Test Engineers 194 |
| Test Engineers 195 |
| Test Engineers 196 |
| Documentation Engineers2 |
| Documentation Engineers3 |
| Documentation Engineers4 |
| Documentation Engineers5 |
| Documentation Engineers6 |
| Test Engineer 3811 |
| Test Engineer 73812 |
| System Engineer 74107 |
| System Engineer 74108 |
| Programmers/software engineer 6017 |

## Schedule

| ID | WBS | Task | Duration | Start | Finish | Predecessors | Total slack | Resources | Work |
| --- | --- | --- | --- | --- | --- | --- | --- | --- | --- |
| 1 | 1 | **SPM - Project 3** | 174.13d | 2018-11-07 | 2019-07-09 |  |  |  | 3591.92h |
| 2 | 1.1 | **project plan** | 9.29d | 2018-11-07 | 2018-11-20 |  | 0d |  | 182.32h |
| 3 | 1.1.1 | write plan | 3.16d | 2018-11-07 | 2018-11-12 |  | 0d | project manager 9 | 25.28h |
| 4 | 1.1.2 | **Review plan** | 4.98d | 2018-11-12 | 2018-11-19 |  | 0d |  | 147.84h |
| 5 | 1.1.2.1 | preparation | 3.8d | 2018-11-12 | 2018-11-15 | 3 | 0d | Documentation Engineers2 [50%]; Requirement Engineers2 [50%]; System Engineers2 [50%]; Test Engineers 2 [50%]; Programmers or Software engineers3 | 91.2h |
| 6 | 1.1.2.2 | meeting | 1.18d | 2018-11-15 | 2018-11-19 | 5 | 0d | Documentation Engineers2; Programmers or Software engineers3; Requirement Engineers2; System Engineers2; Test Engineers 2; project manager 9 | 56.64h |
| 7 | 1.1.3 | rework | 1.15d | 2018-11-19 | 2018-11-20 | 6 | 0d | project manager 9 | 9.2h |
| 8 | 1.2 | **Documented Software Development Process Updates** | 7.64d | 2018-11-20 | 2018-11-29 | 2 | 0d |  | 116.8h |
| 9 | 1.2.1 | process changes | 1.1d | 2018-11-20 | 2018-11-21 |  | 0d | Programmers or Software engineers1215 | 8.8h |
| 10 | 1.2.2 | **Review changes** | 5.86d | 2018-11-21 | 2018-11-29 |  | 0d |  | 102.56h |
| 11 | 1.2.2.1 | preparation | 3.66d | 2018-11-21 | 2018-11-27 | 9 | 0d | Programmers or Software engineers1; Requirement Engineers1; System Engineers1 [50%]; Test Engineers 1 | 58.56h |
| 12 | 1.2.2.2 | meeting | 2.2d | 2018-11-27 | 2018-11-29 | 11 | 0d | Programmers or Software engineers1215; Programmers or Software engineers1; Requirement Engineers1; System Engineers1 [50%]; Test Engineers 1 | 44h |
| 13 | 1.2.3 | rework | 0.68d | 2018-11-29 | 2018-11-29 | 12 | 0d | Programmers or Software engineers1215 | 5.44h |
| 14 | 1.3 | **Requirement** | 6.62d | 2018-11-29 | 2018-12-10 | 8 | 0d |  | 181.2h |
| 15 | 1.3.1 | write requirement | 2.21d | 2018-11-29 | 2018-12-04 |  | 0d | Requirement engineer 215; Requirement engineer 214 | 35.44h |
| 16 | 1.3.2 | **Review** | 3.7d | 2018-12-04 | 2018-12-07 |  | 0d |  | 134.4h |
| 17 | 1.3.2.1 | preparation | 1.7d | 2018-12-04 | 2018-12-05 | 15 | 0d | Documentation Engineers6; Programmers/software engineer 6017; System Engineer 74107; Test Engineer 3811 | 54.4h |
| 18 | 1.3.2.2 | meeting | 2d | 2018-12-05 | 2018-12-07 | 17 | 0d | Documentation Engineers6; Requirement engineer 215; System Engineer 74107; Test Engineer 3811; Programmers/software engineer 6017 | 80h |
| 19 | 1.3.3 | rework | 0.71d | 2018-12-07 | 2018-12-10 | 18 | 0d | Requirement engineer 215; Requirement engineer 214 | 11.36h |
| 20 | 1.4 | **Build the development and testing lab environment** | 23.45d | 2018-12-10 | 2019-01-11 | 2, 14 | 0d |  | 315.6h |
| 21 | 1.4.1 | **hardware environment** | 11.2d | 2018-12-10 | 2018-12-25 |  | 0d |  | 169.6h |
| 22 | 1.4.1.1 | servers | 5d | 2018-12-10 | 2018-12-17 |  | 6.2d | System Engineer 74107; System Engineer 74108 | 80h |
| 23 | 1.4.1.2 | clients | 11.2d | 2018-12-10 | 2018-12-25 |  | 0d | System Engineers2 [50%]; System Engineers4 [50%] | 89.6h |
| 24 | 1.4.2 | **Software development tools** | 1.25d | 2018-12-25 | 2018-12-27 |  | 0d |  | 10h |
| 25 | 1.4.2.1 | build/compile tools | 1.25d | 2018-12-25 | 2018-12-27 | 21 | 0d | System Engineer 74108 | 10h |

| ID | WBS | Task | Duration | Start | Finish | Predecessors | Total slack | Free slack | Resources | Work |
| --- | --- | --- | --- | --- | --- | --- | --- | --- | --- | --- |
| 26 | 1.4.3 | **software testing tools** | 11d | 2018-12-27 | 2019-01-11 |  | 0d |  |  | 136h |
| 27 | 1.4.3.1 | test cases execution tools | 6d | 2018-12-27 | 2019-01-04 | 25 | 0d |  | System Engineer 74108; System Engineers3 | 96h |
| 28 | 1.4.3.2 | simulation tools | 5d | 2019-01-04 | 2019-01-11 | 27 | 0d |  | System Engineers5 [50%]; System Engineers6 [50%] | 40h |
| 29 | 1.5 | **Analysis** | 5.68d | 2018-12-10 | 2018-12-18 | 14 | 17.77d |  |  | 117.44h |
| 30 | 1.5.1 | Write analysis | 1.8d | 2018-12-10 | 2018-12-12 |  | 3.5d | 0d | Documentation Engineers4 | 14.4h |
| 31 | 1.5.2 | **Review** | 2.7d | 2018-12-12 | 2018-12-17 |  | 17.77d |  |  | 93.6h |
| 32 | 1.5.2.1 | preparation | 1.8d | 2018-12-12 | 2018-12-14 | 30 | 17.77d | 0d | Programmers or Software engineers1; Requirement engineer 212; Test Engineers 196; System Engineers7 | 57.6h |
| 33 | 1.5.2.2 | meeting | 0.9d | 2018-12-14 | 2018-12-17 | 32 | 17.77d | 0d | Programmers or Software engineers1; Requirement engineer 212; Test Engineers 196; System Engineers7; Documentation Engineers4 | 36h |
| 34 | 1.5.3 | rework | 1.18d | 2018-12-17 | 2018-12-18 | 33 | 3.5d |  | Documentation Engineers4 | 9.44h |
| 35 | 1.6 | **Design** | 7.24d | 2019-01-11 | 2019-01-22 | 29, 20 | 0d |  |  | 133.92h |
| 36 | 1.6.1 | Write design document | 2.37d | 2019-01-11 | 2019-01-15 |  | 0d |  | Programmers/software engineer 6017 | 18.96h |
| 37 | 1.6.2 | **Review** | 2.85d | 2019-01-15 | 2019-01-18 |  | 0d |  |  | 98.8h |
| 38 | 1.6.2.1 | preparation | 1.9d | 2019-01-15 | 2019-01-17 | 36 | 0d |  | Documentation Engineers3; Requirement Engineers3; System Engineers3; Test Engineers 3 | 60.8h |
| 39 | 1.6.2.2 | meeting | 0.95d | 2019-01-17 | 2019-01-18 | 38 | 0d |  | Documentation Engineers3; Requirement Engineers3; System Engineers3; Test Engineers 3; Programmers/software engineer 6017 | 38h |
| 40 | 1.6.3 | rework | 2.02d | 2019-01-18 | 2019-01-22 | 39 | 0d |  | Programmers/software engineer 6017 | 16.16h |
| 41 | 1.7 | **Coding** | 79.06d | 2019-01-22 | 2019-05-13 |  | 0d |  |  | 1676.24h |
| 42 | 1.7.1 | Write Code | 47.6d | 2019-01-22 | 2019-03-28 | 35, 20 | 0d |  | Programmers/software engineer 6017; Programmers or Software engineers6 [50%]; Programmers or Software engineers7 [50%]; Programmers or Software engineers8 [50%] | 761.6h |
| 43 | 1.7.2 | **Unit Testing** | 18.81d | 2019-03-28 | 2019-04-24 |  | 0d |  |  | 538h |
| 44 | 1.7.2.1 | Prepare/Execute Test Cases | 6.31d | 2019-03-28 | 2019-04-08 | 42 | 0d |  | Test Engineer 73812; Test Engineers 193; Test Engineers 194; Test Engineers 195 | 202h |
| 45 | 1.7.2.2 | Fix Found Defects | 8.5d | 2019-04-08 | 2019-04-18 | 44 | 0d |  | Programmers/software engineer 6017; Programmers or Software engineers6; Programmers or Software engineers7; Programmers or Software engineers8 | 272h |
| 46 | 1.7.2.3 | Test Fixed Defects | 4d | 2019-04-18 | 2019-04-24 | 45 | 0d |  | Test Engineers 193; Test Engineers 194 | 64h |
| 47 | 1.7.3 | **Code Inspection** | 12.65d | 2019-04-24 | 2019-05-13 | 43 | 0d |  |  | 376.64h |
| 48 | 1.7.3.1 | Preparation for Code Inspection | 5.19d | 2019-04-24 | 2019-05-01 |  | 0d |  | Requirement Engineers2; System Engineer 74108; Documentation Engineers3; Test Engineers 1 | 166.08h |
| 49 | 1.7.3.2 | Code Inspection Meeting | 3.8d | 2019-05-01 | 2019-05-07 | 48 | 0d |  | Requirement Engineers2; Test Engineers 2; System Engineer 74108; Programmers/software engineer 6017; Documentation Engineers3 | 152h |
| 50 | 1.7.3.3 | Rework | 3.66d | 2019-05-07 | 2019-05-13 | 49 | 0d |  | Programmers/software engineer 6017; Programmers or Software engineers4 | 58.56h |

| ID | WBS | Task | Duration | Start | Finish | Predecessors | Total slack | Resources | Work |
| --- | --- | --- | --- | --- | --- | --- | --- | --- | --- |
| 51 | 1.8 | **Testing** | 27.61d | 2019-05-13 | 2019-06-19 |  | 0d |  | 531.28h |
| 52 | 1.8.1 | Write test plan (TP) | 5.6d | 2019-05-13 | 2019-05-20 | 14, 41 | 0d | Test Engineers 4; Test Engineers 5 | 89.6h |
| 53 | 1.8.2 | **Review TP** | 6.36d | 2019-05-20 | 2019-05-29 |  | 0d |  | 191.28h |
| 54 | 1.8.2.1 | Preparation for TP | 3.5d | 2019-05-20 | 2019-05-24 | 52 | 0d | Documentation Engineers5; Requirement Engineers5; System Engineers8; Programmers or Software engineers8 | 112h |
| 55 | 1.8.2.2 | Review TP Meeting | 1.4d | 2019-05-24 | 2019-05-27 | 54 | 0d | Documentation Engineers5; Requirement Engineers5; System Engineers8; Programmers or Software engineers8; Test Engineers 5 | 56h |
| 56 | 1.8.2.3 | Rework | 1.46d | 2019-05-27 | 2019-05-29 | 55 | 0d | Test Engineers 4; Test Engineers 5 | 23.28h |
| 57 | 1.8.3 | Execute TP (test cases) | 8.15d | 2019-05-29 | 2019-06-10 | 53 | 0d | Test Engineers 6; Test Engineers 7 | 130.4h |
| 58 | 1.8.4 | Fix Found Defects | 4.5d | 2019-06-10 | 2019-06-14 | 57 | 0d | Programmers or Software engineers1215; Programmers/software engineer 6017 | 72h |
| 59 | 1.8.5 | Test Fixed Defects | 3d | 2019-06-14 | 2019-06-19 | 58 | 13.22d | Test Engineers 6; Test Engineers 7 | 48h |
| 60 | 1.9 | **Documentation** | 16.22d | 2019-06-14 | 2019-07-09 | 14 | 0d |  | 337.12h |
| 61 | 1.9.1 | Write document | 5.77d | 2019-06-14 | 2019-06-24 | 14, 58 | 0d | Documentation Engineers6 | 46.16h |
| 62 | 1.9.2 | **Review** | 10.45d | 2019-06-24 | 2019-07-09 |  | 0d |  | 290.96h |
| 63 | 1.9.2.1 | preparation | 4.8d | 2019-06-24 | 2019-07-01 | 61 | 0d | Programmers or Software engineers2; Requirement engineer 212; System Engineers2; Test Engineers 2 | 153.6h |
| 64 | 1.9.2.2 | meeting | 2.88d | 2019-07-01 | 2019-07-04 | 63 | 0d | Programmers or Software engineers2; Requirement engineer 212; System Engineers2; Test Engineers 2; Documentation Engineers6 | 115.2h |
| 65 | 1.9.2.3 | rework | 2.77d | 2019-07-04 | 2019-07-09 | 64 | 0d | Documentation Engineers6 | 22.16h |
